# PDT_Toledano_Clientes_Tipologia

Schedule from MS Project, 2023-11-20 to 2023-12-06.

## Calendars

- Estándar: Mon-Fri 09:00-13:00, 15:00-19:00; Sat-Sun off.

## Schedule

| ID | WBS | Task | Duration | Start | Finish | Predecessors | Total slack |
| --- | --- | --- | --- | --- | --- | --- | --- |
| 1 | 1 | **PDT Agregar tipología** | 13d | 2023-11-20 09:00 | 2023-12-06 19:00 |  | 0d |
| 2 | 1.1 | Análisis diseño | 2d | 2023-11-20 09:00 | 2023-11-21 19:00 |  | 0d |
| 3 | 1.2 | **BOF** | 3d | 2023-11-22 09:00 | 2023-11-24 19:00 |  | 0d |
| 4 | 1.2.1 | Agregar campo tipologia en la tabla D_CLINUEVOT y en la tabla P_CLIENTE, creación de clases | 2h | 2023-11-22 09:00 | 2023-11-22 11:00 | 2 | 0d |
| 5 | 1.2.2 | Crear tabla P_TIPOLOGIA | 2h | 2023-11-22 11:00 | 2023-11-22 13:00 | 4 | 0d |
| 6 | 1.2.3 | Crear la dependencia del campo tipologia con canal y subcanal | 4h | 2023-11-22 15:00 | 2023-11-22 19:00 | 5 | 0d |
| 7 | 1.2.4 | Crear mantenimiento de tipología | 1d | 2023-11-23 09:00 | 2023-11-23 19:00 | 6 | 0d |
| 8 | 1.2.5 | Agregar el campo en el mantenimiento de cliente | 4h | 2023-11-24 09:00 | 2023-11-24 13:00 | 7 | 0d |
| 9 | 1.2.6 | Agregar el campo en los datos que se muestran del cliente nuevo | 4h | 2023-11-24 15:00 | 2023-11-24 19:00 | 8 | 0d |
| 10 | 1.3 | **PDA** | 5d | 2023-11-27 09:00 | 2023-12-01 19:00 |  | 0d |
| 11 | 1.3.1 | Agregar campo tipologia en la tabla D_CLINUEVOT y en la tabla P_CLIENTE y modificación de clases | 2h | 2023-11-27 09:00 | 2023-11-27 11:00 | 9 | 0d |
| 12 | 1.3.2 | Modificar el proceso de carga de datos | 1h | 2023-11-27 11:00 | 2023-11-27 12:00 | 11 | 0d |
| 13 | 1.3.3 | Modificar el proceso de envío de datos | 1h | 2023-11-27 12:00 | 2023-11-27 13:00 | 12 | 0d |
| 14 | 1.3.4 | Modificar la creación de cliente nuevo | 1d | 2023-11-27 15:00 | 2023-11-28 13:00 | 13 | 0d |
| 15 | 1.3.5 | Modificar la pantalla de detalle de clientes | 4h | 2023-11-28 15:00 | 2023-11-28 19:00 | 14 | 0d |
| 16 | 1.3.6 | Realizar validación del RUC del cliente | 3d | 2023-11-29 09:00 | 2023-12-01 19:00 | 15 | 0d |
| 17 | 1.4 | Pruebas y correcciones | 3d | 2023-12-04 09:00 | 2023-12-06 19:00 | 16 | 0d |
