# PDT_FEL

Schedule from MS Project, 2023-06-15 to 2023-06-22.

## Calendars

- Estándar: Mon-Fri 09:00-13:00, 15:00-19:00; Sat-Sun off.

## Resources

| Resource |
| --- |
| Programador 1 |
| Programador 2 |
| Dev1 |
| Dev2 |

## Schedule

| ID | WBS | Task | Duration | Start | Finish | Predecessors | Total slack | Resources | Work |
| --- | --- | --- | --- | --- | --- | --- | --- | --- | --- |
| 1 | 1 | **Requerimientos ROAD BOF** | 6d | 2023-06-15 09:00 | 2023-06-22 19:00 |  | 0d |  | 48h |
| 2 | 1.1 | Análisis y diseño de las modificaciones a realizar | 1d | 2023-06-15 09:00 | 2023-06-15 19:00 |  | 0d | Dev1 | 8h |
| 3 | 1.2 | **BOF** | 5d | 2023-06-16 09:00 | 2023-06-22 19:00 |  | 0d |  | 40h |
| 4 | 1.2.1 | **Requerimiento#1 - Agregar campo al encabezado de la factura para indicar razones sobre la factura** | 1.75d | 2023-06-16 09:00 | 2023-06-19 17:00 |  | 0d |  | 14h |
| 5 | 1.2.1.1 | Creación de tabla P_RAZON_FACTURA_PENDIENTE, agregar campo en D_FACTURA el campo Codigo_Razon_Pendiente | 2h | 2023-06-16 09:00 | 2023-06-16 11:00 | 2 | 0d | Dev1 | 2h |
| 6 | 1.2.1.2 | Mantenimiento de la tabla P_RAZON_FACTURA_PENDIENTE | 4h | 2023-06-16 11:00 | 2023-06-16 17:00 | 5 | 0d | Dev1 | 4h |
| 7 | 1.2.1.3 | Agregar campo en la pantalla de factura de PDA | 4h | 2023-06-16 17:00 | 2023-06-19 11:00 | 6 | 0d | Dev1 | 4h |
| 8 | 1.2.1.4 | Agregar campo en la pantalla de la factura manual | 4h | 2023-06-19 11:00 | 2023-06-19 17:00 | 7 | 0d | Dev1 | 4h |
| 9 | 1.2.2 | **Requerimiento#2 - Campo abierto para observación de liquidación pendiente** | 1.25d | 2023-06-19 17:00 | 2023-06-20 19:00 |  | 0d |  | 10h |
| 10 | 1.2.2.1 | Creación de tabla P_RAZON_LIQUIDACION_PENDIENTE, agregar campos en P_LIQUIDACION CODIGO_RAZON_PENDIENTE, OBSERVACIONES_PENDIENTE | 2h | 2023-06-19 17:00 | 2023-06-19 19:00 | 8 | 0d | Dev1 | 2h |
| 11 | 1.2.2.2 | Mantenimiento de la tabla P_RAZON_LIQUIDACION_PENDIENTE | 4h | 2023-06-20 09:00 | 2023-06-20 13:00 | 10 | 0d | Dev1 | 4h |
| 12 | 1.2.2.3 | Agregar campos en la pantalla de la liquidación para agregar la razón de pendiente y la observacion | 4h | 2023-06-20 15:00 | 2023-06-20 19:00 | 11 | 0d | Dev1 | 4h |
| 13 | 1.2.3 | Pruebas | 2d | 2023-06-21 09:00 | 2023-06-22 19:00 | 12 | 0d | Dev1 | 16h |
