# PDT_Toledano_20230621

Schedule from MS Project, 2023-07-03 to 2023-07-07, A marks actual dates.

## Calendars

- Estándar: Mon-Fri 09:00-13:00, 15:00-19:00; Sat-Sun off.

## Resources

| Resource |
| --- |
| Carolina Fuentes |

## Schedule

| ID | WBS | Task | Duration | Start | Finish | Predecessors | Complete | Resources | Work | Actual work |
| --- | --- | --- | --- | --- | --- | --- | --- | --- | --- | --- |
| 1 | 1 | **Plan de trabajo Toledano** | 5d | 2023-07-03 09:00 A | 2023-07-07 19:00 A |  | 100% |  | 40h | 40h |
| 2 | 1.1 | Análisis y diseño de las modificaciones a realizar | 1d | 2023-07-03 09:00 A | 2023-07-03 19:00 A |  | 100% | Carolina Fuentes | 8h | 8h |
| 3 | 1.2 | **Requerimiento#1 - Pedidos extra ruta** | 4d | 2023-07-04 09:00 A | 2023-07-07 19:00 A |  | 100% |  | 32h | 32h |
| 4 | 1.2.1 | **BOF** | 0.5d | 2023-07-04 09:00 A | 2023-07-04 13:00 A |  | 100% |  | 4h | 4h |
| 5 | 1.2.1.1 | Creación de campo en tabla P_CLIENTE PERMITIR_PEDIDO_EXTRA_RUTA y modificar clases asociadas | 2h | 2023-07-04 09:00 A | 2023-07-04 11:00 A | 2 | 100% | Carolina Fuentes | 2h | 2h |
| 6 | 1.2.1.2 | Modificar mantenimiento de la tabla P_CLIENTE por campo nuevo | 2h | 2023-07-04 11:00 A | 2023-07-04 13:00 A | 5 | 100% | Carolina Fuentes | 2h | 2h |
| 7 | 1.2.2 | **HH** | 1.5d | 2023-07-04 15:00 A | 2023-07-05 19:00 A |  | 100% |  | 12h | 12h |
| 8 | 1.2.2.1 | Creación de campo en P_CLIENTE PERMITIR_PEDIDO_EXTRA_RUTA y modificar métodos asociados | 2h | 2023-07-04 15:00 A | 2023-07-04 17:00 A | 6 | 100% | Carolina Fuentes | 2h | 2h |
| 9 | 1.2.2.2 | Modificar proceso de importación de datos de la tabla P_CLIENTE | 2h | 2023-07-04 17:00 A | 2023-07-04 19:00 A | 8 | 100% | Carolina Fuentes | 2h | 2h |
| 10 | 1.2.2.3 | Agregar validación en la pantalla de detalle de cliente en base al nuevo parámetro | 1d | 2023-07-05 09:00 A | 2023-07-05 19:00 A | 9 | 100% | Carolina Fuentes | 8h | 8h |
| 11 | 1.2.3 | Pruebas | 2d | 2023-07-06 09:00 A | 2023-07-07 19:00 A | 10 | 100% | Carolina Fuentes | 16h | 16h |
